# 立项

Schedule from a web Gantt chart, 2024-05-17 to 2024-06-17.
Saturdays and Sundays are off

## Schedule

| ID | WBS | Task | Duration | Start | Finish | Predecessors | Status |
| --- | --- | --- | --- | --- | --- | --- | --- |
| 2 | 1 | 党委会汇报审议 | 1d | 2024-05-17 | 2024-05-17 |  | waiting |
| 3 | 2 | 发改投资项目赋码备案 | 1d | 2024-05-20 | 2024-05-20 | 2 | waiting |
| 4 | 3 | 管线规划路由咨询委托（直接委托） | 1d | 2024-05-21 | 2024-05-21 | 3 | waiting |
| 5 | 4 | 管线规划路由方案编制评审 | 15d | 2024-05-22 | 2024-06-11 | 4 | waiting |
| 6 | 5 | 可研委托（中介超市） | 5d | 2024-05-21 | 2024-05-27 | 3 | waiting |
| 7 | 6 | 可研编制评审 | 14d | 2024-05-28 | 2024-06-14 | 6 | waiting |
| 8 | 7 | 可研报批 | 1d | 2024-06-17 | 2024-06-17 | 7 | waiting |
| 9 | 8 | 补水可行性专项咨询委托（中介超市） | 5d | 2024-05-21 | 2024-05-27 | 3 | waiting |
| 10 | 9 | 补水可行性专项咨询编制 | 7d | 2024-05-28 | 2024-06-05 | 9 | waiting |
